# OJTFU_K2_DetailedPlan_Portlet_v0.3

Schedule from MS Project, 2012-05-07 to 2012-08-20.

## Calendars

- Standard: Mon-Fri 08:30-12:00, 13:00-17:30; Sat-Sun off.

## Resources

| Resource |
| --- |
| All team |
| DuyTK1 |
| DuyND2 |
| TuanLM3 |
| All team members |
| DuyND |
| VienBN |
| NhatVM |
| TrietNM |
| TrietTM |
| GiangPNT |
| TruongMD |
| TruongMH |
| HaiTCT |

## Schedule

| ID | WBS | Task | Duration | Start | Finish | Predecessors | Total slack | Constraint | Resources | Work |
| --- | --- | --- | --- | --- | --- | --- | --- | --- | --- | --- |
| 1 | 1 | **OOPMS** | 76d | 2012-05-07 | 2012-08-20 |  | 0d |  |  | 1444h |
| 2 | 1.1 | **Initiation** | 2d | 2012-05-07 | 2012-05-08 |  | 0d |  | All team members | 16h |
| 3 | 1.1.1 | Kick-off meeting | 1d | 2012-05-07 | 2012-05-07 |  | 0d | start no earlier than 2012-05-07 |  |  |
| 4 | 1.1.2 | Introduce overview about Eclipse plug-in development | 4h | 2012-05-08 | 2012-05-08 | 3 | 0d |  |  |  |
| 5 | 1.1.3 | Introduce overview about Android development | 4h | 2012-05-08 | 2012-05-08 | 4 | 0d |  |  |  |
| 6 | 1.2 | **Planning** | 5d | 2012-05-09 | 2012-05-15 | 2 | 0d |  |  | 56h |
| 7 | 1.2.1 | Develop scope statement | 3d | 2012-05-09 | 2012-05-11 |  | 0d |  | All team members | 24h |
| 8 | 1.2.2 | Create WBS | 2d | 2012-05-09 | 2012-05-10 |  | 3d |  | DuyND | 16h |
| 9 | 1.2.3 | Develop and refine other plans | 2d | 2012-05-14 | 2012-05-15 | 7 | 0d |  | All team members | 16h |
| 10 | 1.3 | **Solution** | 28d | 2012-05-16 | 2012-06-22 |  | 0d |  |  | 224h |
| 11 | 1.3.1 | Report 1 | 4d | 2012-05-16 | 2012-05-21 | 6 | 0d |  | All team members | 32h |
| 12 | 1.3.2 | Study Requirements + Report 2 | 4d | 2012-05-22 | 2012-05-25 | 11 | 0d |  | All team members | 32h |
| 13 | 1.3.3 | **Develop functional specifications** | 5d | 2012-05-28 | 2012-06-01 |  | 0d |  |  | 40h |
| 14 | 1.3.3.1 | Create SRS | 5d | 2012-05-28 | 2012-06-01 | 12 | 0d | start no earlier than 2012-05-10 | All team members | 40h |
| 15 | 1.3.4 | **Develop prototype based on functional specifications** | 13d | 2012-06-04 | 2012-06-20 | 14 | 0d |  |  | 104h |
| 16 | 1.3.4.1 | Database Design | 5d | 2012-06-04 | 2012-06-08 |  | 0d |  | All team members | 40h |
| 17 | 1.3.4.2 | ScreenDesign | 2d | 2012-06-11 | 2012-06-12 | 16 | 0d | finish no earlier than 2011-05-20 | All team members | 16h |
| 18 | 1.3.4.3 | Activity Diagram | 2d | 2012-06-13 | 2012-06-14 | 17 | 0d | start no earlier than 2011-05-20 | All team members | 16h |
| 19 | 1.3.4.4 | Sequence Diagram | 2d | 2012-06-15 | 2012-06-18 | 18 | 0d | start no earlier than 2011-05-20 | All team members | 16h |
| 20 | 1.3.4.5 | DDD | 2d | 2012-06-19 | 2012-06-20 | 19 | 0d | start no earlier than 2011-05-20 | All team members | 16h |
| 21 | 1.3.5 | Review functional specifications (Offline) | 1d | 2012-06-21 | 2012-06-21 | 20 | 0d | start no earlier than 2011-05-23 | All team members | 8h |
| 22 | 1.3.6 | Assess Understand the requirement | 1d | 2012-06-22 | 2012-06-22 | 21 | 0d |  | All team members | 8h |
| 23 | 1.4 | **Construction** | 36d | 2012-06-25 | 2012-08-13 | 10 | 0d |  |  | 604h |
| 24 | 1.4.1 | **Development** | 24.5d | 2012-06-25 | 2012-07-27 |  | 0d |  |  | 448h |
| 25 | 1.4.1.1 | Create coding plan | 4h | 2012-06-25 | 2012-06-25 |  | 0d |  |  |  |

| ID | WBS | Task | Duration | Start | Finish | Predecessors | Total slack | Free slack | Constraint | Resources | Work |
| --- | --- | --- | --- | --- | --- | --- | --- | --- | --- | --- | --- |
| 26 | 1.4.1.2 | **Development** | 16d | 2012-06-25 | 2012-07-17 | 25 | 0d |  |  |  | 384h |
| 27 | 1.4.1.2.1 | **Screen design** | 5d | 2012-06-25 | 2012-07-02 |  | 0d |  |  |  | 112h |
| 28 | 1.4.1.2.1.1 | Pages (Requirement, Portal) | 3d | 2012-06-25 | 2012-06-28 |  | 34.5d |  |  | DuyND | 24h |
| 29 | 1.4.1.2.1.2 | Pages (DMS, Timesheet) | 3d | 2012-06-25 | 2012-06-28 |  | 34.5d |  |  | TruongMH | 24h |
| 30 | 1.4.1.2.1.3 | Pages (Project Eyes, Admin, Product) | 3d | 2012-06-25 | 2012-06-28 |  | 34.5d |  |  | HaiTCT | 24h |
| 31 | 1.4.1.2.1.4 | Pages (Report, Dashboard, Planner) | 3d | 2012-06-25 | 2012-06-28 |  | 0d |  |  | GiangPNT | 24h |
| 32 | 1.4.1.2.1.5 | Review Pages | 2d | 2012-06-28 | 2012-07-02 | 31 | 0d |  |  | All team members | 16h |
| 33 | 1.4.1.2.2 | Database Design, Pages review, mapping | 2d | 2012-07-02 | 2012-07-04 | 32 | 0d |  |  | All team members | 16h |
| 34 | 1.4.1.2.3 | **Functions code** | 9d | 2012-07-04 | 2012-07-17 | 33 | 0d |  |  |  | 256h |
| 35 | 1.4.1.2.3.1 | Function 1 Requirement | 3d | 2012-07-04 | 2012-07-09 |  | 0d |  |  | DuyND | 24h |
| 36 | 1.4.1.2.3.2 | Function 2 DMS | 3d | 2012-07-04 | 2012-07-09 |  | 23.5d | 0d |  | TruongMH | 24h |
| 37 | 1.4.1.2.3.3 | Function 3 Admin | 3d | 2012-07-04 | 2012-07-09 |  | 23.5d | 0d |  | HaiTCT | 24h |
| 38 | 1.4.1.2.3.4 | Function 4 Dashboard | 3d | 2012-07-04 | 2012-07-09 |  | 23.5d | 0d |  | GiangPNT | 24h |
| 39 | 1.4.1.2.3.5 | Function 5 Portal | 4d | 2012-07-09 | 2012-07-13 | 35 | 0d |  |  | DuyND | 32h |
| 40 | 1.4.1.2.3.6 | Function 6 Timesheet | 4d | 2012-07-09 | 2012-07-13 | 36 | 23.5d |  |  | TruongMH | 32h |
| 41 | 1.4.1.2.3.7 | Function 7 Admin, Product | 4d | 2012-07-09 | 2012-07-13 | 37 | 23.5d |  |  | HaiTCT | 32h |
| 42 | 1.4.1.2.3.8 | Function 8 Planner, Report | 4d | 2012-07-09 | 2012-07-13 | 38 | 23.5d |  |  | GiangPNT | 32h |
| 43 | 1.4.1.2.3.9 | Function 9 Dashboard, Project Eye | 2d | 2012-07-13 | 2012-07-17 | 39 | 21.5d |  |  | All team members | 16h |
| 44 | 1.4.1.2.3.10 | Function 10 Planner, Report | 2d | 2012-07-13 | 2012-07-17 | 39 | 0d |  |  | All team members | 16h |
| 45 | 1.4.1.3 | Review code offline | 1d | 2012-07-17 | 2012-07-18 | 44 | 0d |  |  | All team members | 8h |
| 46 | 1.4.1.4 | Modify if needed | 1d | 2012-07-18 | 2012-07-19 | 45 | 0d |  |  | All team members | 8h |
| 47 | 1.4.1.5 | Integration | 2d | 2012-07-19 | 2012-07-23 | 46 | 0d |  |  | All team members | 16h |
| 48 | 1.4.1.6 | Study and develop Android Version | 4d | 2012-07-23 | 2012-07-27 | 47 | 0d |  |  | All team members | 32h |
| 49 | 1.4.2 | **Testing** | 11.5d | 2012-07-27 | 2012-08-13 | 48 | 0d |  |  | All team members | 156h |
| 50 | 1.4.2.1 | Create Testing plan | 4h | 2012-07-27 | 2012-07-27 |  | 0d |  | start no earlier than 2011-05-30 |  |  |

| ID | WBS | Task | Duration | Start | Finish | Predecessors | Total slack | Constraint | Resources | Work |
| --- | --- | --- | --- | --- | --- | --- | --- | --- | --- | --- |
| 51 | 1.4.2.2 | **Unit Testing** | 5.5d | 2012-07-30 | 2012-08-06 |  | 0d |  |  | 64h |
| 52 | 1.4.2.2.1 | Create Test case | 1d | 2012-07-30 | 2012-07-30 | 50 | 0d |  |  | 8h |
| 53 | 1.4.2.2.2 | Review test case online | 1d | 2012-07-31 | 2012-07-31 | 52 | 0d |  |  | 4h |
| 54 | 1.4.2.2.3 | Create Test code | 1d | 2012-08-01 | 2012-08-01 | 53 | 0d |  |  | 16h |
| 55 | 1.4.2.2.4 | Review Test code and Unit Test Statistical Report | 4h | 2012-08-02 | 2012-08-02 | 54 | 0d |  |  | 4h |
| 56 | 1.4.2.2.5 | Modify code (fix bug, if any) | 1d | 2012-08-02 | 2012-08-03 | 55 | 0d |  |  | 16h |
| 57 | 1.4.2.2.6 | Re-test modified code | 4h | 2012-08-03 | 2012-08-03 | 56 | 0d |  |  | 8h |
| 58 | 1.4.2.2.7 | Assess Unit Testing (Write Test Case, Test Code, Test Report) | 4h | 2012-08-06 | 2012-08-06 | 57 | 0d |  |  | 8h |
| 59 | 1.4.2.3 | **Integration Testing** | 5.5d | 2012-08-06 | 2012-08-13 |  | 0d |  |  |  |
| 60 | 1.4.2.3.1 | Create Test case | 1d | 2012-08-06 | 2012-08-07 | 47, 58 | 0d |  |  |  |
| 61 | 1.4.2.3.2 | Review test case online | 1d | 2012-08-07 | 2012-08-08 | 60 | 0d |  |  |  |
| 62 | 1.4.2.3.3 | Create Test code | 1d | 2012-08-08 | 2012-08-09 | 61 | 0d |  |  |  |
| 63 | 1.4.2.3.4 | Review Test code and Unit Test Statistical Report | 4h | 2012-08-09 | 2012-08-09 | 62 | 0d |  |  |  |
| 64 | 1.4.2.3.5 | Modify code (fix bug, if any) | 1d | 2012-08-10 | 2012-08-10 | 63 | 0d |  |  |  |
| 65 | 1.4.2.3.6 | Re-test modified code | 4h | 2012-08-13 | 2012-08-13 | 64 | 0d |  |  |  |
| 66 | 1.4.2.3.7 | Assess Unit Testing (Write Test Case, Test Code, Test Report) | 4h | 2012-08-13 | 2012-08-13 | 65 | 0d |  |  |  |
| 67 | 1.5 | Monitoring and Controlling | 63d | 2012-05-16 | 2012-08-10 | 6 | 6d | start no earlier than 2012-03-16 | DuyND | 504h |
| 68 | 1.6 | **Termination** | 5d | 2012-08-14 | 2012-08-20 | 23 | 0d |  | All team members | 40h |
| 69 | 1.6.1 | Milestone assessment | 2d | 2012-08-14 | 2012-08-15 |  | 0d |  | All team members |  |
| 70 | 1.6.2 | Deployment | 3d | 2012-08-16 | 2012-08-20 | 69 | 0d |  |  |  |
